# Proyecto3_2

How a schedule from MS Project changed from version to version. A marks actual dates.

## Version 1 (saved 2015-02-18)

Note of the change: 18022015Clase

| ID | WBS | Task | Duration | Start | Finish | Total float |
| --- | --- | --- | --- | --- | --- | --- |
| 1 | 1 | **Responsabilidad de la dirección** | 1d? | 2015-02-18 | 2015-02-18 | 0d |
| 2 |  | 1 reunión con cliente | 1d? | 2015-02-18 | 2015-02-18 |  |
| 3 |  | Presentación de proyecto al cliente | 1d? | 2015-02-18 | 2015-02-18 |  |
| 4 |  | Gastos indirectos | 1d? | 2015-02-18 | 2015-02-18 |  |
| 5 |  | Taquillas y equipos instalados | 1d? | 2015-02-18 | 2015-02-18 |  |
| 6 |  | Finalización de sala 3D | 1d? | 2015-02-18 | 2015-02-18 |  |
| 7 |  | Finalización de sala digital | 1d? | 2015-02-18 | 2015-02-18 |  |
| 8 |  | Finalización de sala VO | 1d? | 2015-02-18 | 2015-02-18 |  |
| 9 |  | Entrega de diseños web | 1d? | 2015-02-18 | 2015-02-18 |  |
| 10 |  | Entrega final | 1d? | 2015-02-18 | 2015-02-18 |  |
| 11 | 2 | **Gestión de recursos** | 1d? | 2015-02-18 | 2015-02-18 | 0d |
| 12 |  | Busqueda de proveedores de máquinas expendedoras | 1d | 2015-02-18 | 2015-02-18 |  |
| 13 |  | Busqueda de proveedores de ordenadores | 1d | 2015-02-18 | 2015-02-18 |  |
| 14 |  | Busqueda de proveedores de muebles | 1d | 2015-02-18 | 2015-02-18 |  |
| 15 |  | Busqueda de proveedores de proyectores | 1d? | 2015-02-18 | 2015-02-18 |  |
| 16 |  | Busqueda de empresas de electricidad | 1d? | 2015-02-18 | 2015-02-18 |  |
| 17 |  | Busqueda de instaladores de aire acondicionado | 1d? | 2015-02-18 | 2015-02-18 |  |
| 18 |  | Busqueda de instaladores de moqueta/sillones | 1d? | 2015-02-18 | 2015-02-18 |  |
| 19 |  | Busqueda de cursos .NET | 1d | 2015-02-18 | 2015-02-18 | 0d |
| 20 |  | Contratación de instaladores eléctricos | 1d? | 2015-02-18 | 2015-02-18 |  |
| 21 |  | Contratación de instaladores de AC | 1d | 2015-02-18 | 2015-02-18 |  |
| 22 |  | Contratación de instaladores moqueda/sillones | 1d | 2015-02-18 | 2015-02-18 |  |
| 23 |  | Matriculación en cursos | 1d | 2015-02-18 | 2015-02-18 |  |
| 24 |  | Cursos de .NET | 1d | 2015-02-18 | 2015-02-18 |  |
| 25 | 3 | **Realización del producto** | 1d? | 2015-02-18 | 2015-02-18 | 0d |
| 26 |  | Planificación instalación de máquinas | 1d? | 2015-02-18 | 2015-02-18 |  |
| 27 |  | Planificación instalación de salas | 1d? | 2015-02-18 | 2015-02-18 |  |
| 28 |  | Planificación portal web | 1d? | 2015-02-18 | 2015-02-18 |  |
| 29 |  | Compra de las máquinas | 1d? | 2015-02-18 | 2015-02-18 |  |
| 30 |  | Compra de ordenadores | 1d? | 2015-02-18 | 2015-02-18 |  |
| 31 |  | Compra de muebles | 1d | 2015-02-18 | 2015-02-18 |  |
| 32 |  | Instalación de máquinas | 1d | 2015-02-18 | 2015-02-18 | 0d |
| 33 |  | Instalación de ordenadores | 1d | 2015-02-18 | 2015-02-18 | 0d |
| 34 |  | Instalación de mobiliario | 1d | 2015-02-18 | 2015-02-18 | 0d |
| 35 | 3.10 | **Sala 3d** | 1d? | 2015-02-18 | 2015-02-18 | 0d |
| 36 |  | Comprar proyector y gafas | 1d? | 2015-02-18 | 2015-02-18 |  |
| 37 |  | Poner butacas | 1d? | 2015-02-18 | 2015-02-18 |  |
| 38 |  | Instalar aire acondicionado | 1d? | 2015-02-18 | 2015-02-18 |  |
| 39 |  | Moqueta | 1d | 2015-02-18 | 2015-02-18 |  |
| 40 |  | Iluminado | 1d | 2015-02-18 | 2015-02-18 |  |
| 41 |  | Limpieza | 1d | 2015-02-18 | 2015-02-18 |  |
| 42 | 3.11 | **Sala digital** | 1d? | 2015-02-18 | 2015-02-18 | 0d |
| 43 |  | Compra de proyector | 1d? | 2015-02-18 | 2015-02-18 |  |
| 44 |  | Poner butacas | 1d | 2015-02-18 | 2015-02-18 |  |
| 45 |  | Instalar aire acondicionado | 1d | 2015-02-18 | 2015-02-18 |  |
| 46 |  | Moqueta | 1d | 2015-02-18 | 2015-02-18 |  |
| 47 |  | Iluminado | 1d | 2015-02-18 | 2015-02-18 |  |
| 48 |  | Limpieza | 1d | 2015-02-18 | 2015-02-18 |  |
| 49 | 3.12 | **Sala VO** | 1d? | 2015-02-18 | 2015-02-18 | 0d |
| 50 |  | Compra de proyector | 1d? | 2015-02-18 | 2015-02-18 |  |
| 51 |  | Poner butacas | 1d | 2015-02-18 | 2015-02-18 |  |
| 52 |  | Instalar aire acondicionado | 1d | 2015-02-18 | 2015-02-18 |  |
| 53 |  | Moqueta | 1d | 2015-02-18 | 2015-02-18 |  |
| 54 |  | Iluminado | 1d | 2015-02-18 | 2015-02-18 |  |
| 55 |  | Limpieza | 1d | 2015-02-18 | 2015-02-18 |  |
| 56 | 3.13 | **Portal web** | 1d? | 2015-02-18 | 2015-02-18 | 0d |
| 57 |  | Compra de ordenadores para SEINGESA | 1d? | 2015-02-18 | 2015-02-18 |  |
| 58 |  | Diseño web (cliente) | 1d | 2015-02-18 | 2015-02-18 |  |
| 59 |  | Diseño web (gráfico) | 1d | 2015-02-18 | 2015-02-18 |  |
| 60 |  | Diseño web (servidor) | 1d | 2015-02-18 | 2015-02-18 |  |
| 61 |  | Edición de videos | 1d | 2015-02-18 | 2015-02-18 |  |
| 62 |  | Publicación de videos | 1d | 2015-02-18 | 2015-02-18 |  |
| 63 |  | Adquisición de recursos multimedia | 1d | 2015-02-18 | 2015-02-18 |  |
| 64 |  | Programación web (cliente) | 1d? | 2015-02-18 | 2015-02-18 |  |
| 65 |  | Entrega de web (1) | 1d | 2015-02-18 | 2015-02-18 |  |
| 66 |  | Programación compra de entradas | 1d | 2015-02-18 | 2015-02-18 |  |
| 67 |  | Programación de opiniones | 1d | 2015-02-18 | 2015-02-18 |  |
| 68 |  | Programación de avisos | 1d | 2015-02-18 | 2015-02-18 |  |
| 69 |  | Programación control de actualizaciones (peliculas y sesiones) | 1d | 2015-02-18 | 2015-02-18 |  |
| 70 |  | Programación de estadísticas | 1d | 2015-02-18 | 2015-02-18 |  |

| ID | Task | Duration | Start | Finish |
| --- | --- | --- | --- | --- |
| 71 | Programación web (servidor) | 1d | 2015-02-18 | 2015-02-18 |
| 72 | Terminar programación cliente | 1d | 2015-02-18 | 2015-02-18 |
| 73 | Terminar programación servidor | 1d | 2015-02-18 | 2015-02-18 |
| 74 | Entrega de web (2) | 1d | 2015-02-18 | 2015-02-18 |
| 75 | Pruebas de web (1) | 1d | 2015-02-18 | 2015-02-18 |
| 76 | Compra de PC's | 1d | 2015-02-18 | 2015-02-18 |
| 77 | Compra de servidor | 1d | 2015-02-18 | 2015-02-18 |
| 78 | Instalar SO en servidor | 1d | 2015-02-18 | 2015-02-18 |
| 79 | Configurar servidor | 1d | 2015-02-18 | 2015-02-18 |
| 80 | Configurar router | 1d | 2015-02-18 | 2015-02-18 |
| 81 | Prueba de la instalación de servidor | 1d | 2015-02-18 | 2015-02-18 |
| 82 | Instalación de web en servidor | 1d | 2015-02-18 | 2015-02-18 |
| 83 | Entrega web (3) | 1d | 2015-02-18 | 2015-02-18 |
| 84 | Pruebas de web (2) | 1d | 2015-02-18 | 2015-02-18 |

## Version 2 (saved 2015-02-23)

Last finish 2015-02-18 → 2015-04-15 (+56d).

Added:

| ID | Task | Duration | Start | Finish | Predecessors | Resources |
| --- | --- | --- | --- | --- | --- | --- |
| 30 | Comprar servidor | 1.12d | 2015-02-19 | 2015-02-20 | 16 | Rafael Benito; Servidor |

Removed: 9 Entrega de diseños web; 57 Compra de ordenadores para SEINGESA; 76 Compra de PC's; 77 Compra de servidor

Changed:

| ID | Task | Start | Finish | Duration | Total float | Predecessors | Other |
| --- | --- | --- | --- | --- | --- | --- | --- |
| 1 | **Responsabilidad de la dirección** |  | 2015-02-18 → 2015-03-12 (+22d) | 1d? → 16.5d? |  |  |  |
| 2 | 1 reunión con cliente |  | 2015-02-18 → 2015-02-19 (+1d) | 1d? → 1d | none → 38.25d |  | resources none → Enrique Moreno |
| 3 | Presentación de proyecto al cliente | 2015-02-18 → 2015-03-11 (+21d) | 2015-02-18 → 2015-03-12 (+22d) | 1d? → 1d |  | none → 59 | resources none → Enrique Moreno |
| 10 | **Gestión de recursos** | 2015-02-18 → 2015-02-12 (-6d) | 2015-02-18 → 2015-03-03 (+13d) | 1d? → 13.25d | 0d → 2.25d |  |  |
| 11 | Busqueda de proveedores de máquinas expendedoras | 2015-02-18 → 2015-02-12 (-6d) | 2015-02-18 → 2015-02-19 (+1d) | 1d → 5.62d | none → 37.25d |  | constraint none → finish no earlier than 2015-02-19; resources none → Silvia Cerezo (T) [20%] |
| 12 | Busqueda de proveedores de ordenadores |  | 2015-02-18 → 2015-02-19 (+1d) |  | none → 38.25d |  | resources none → Rafael Benito [20%] |
| 13 | Busqueda de proveedores de muebles |  | 2015-02-18 → 2015-02-19 (+1d) | 1d → 1.12d | none → 39.12d |  | resources none → Rafael Benito [20%] |
| 14 | Busqueda de proveedores de proyectores |  | 2015-02-18 → 2015-02-19 (+1d) | 1d? → 1.12d | none → 39.12d |  | resources none → Rafael Benito [20%] |
| 15 | Busqueda de empresas de electricidad |  | 2015-02-18 → 2015-02-19 (+1d) | 1d? → 1.12d | none → 39.12d |  | resources none → Rafael Benito [20%] |
| 16 | Busqueda de instaladores de aire acondicionado |  | 2015-02-18 → 2015-02-19 (+1d) | 1d? → 1.12d | none → -1.5d |  | resources none → Rafael Benito [20%] |
| 17 | Busqueda de instaladores de moqueta/sillones |  | 2015-02-18 → 2015-02-19 (+1d) | 1d? → 1d | none → 38.25d |  | resources none → Silvia Cerezo (T) [20%] |
| 18 | Busqueda de cursos .NET |  |  |  | 0d → 38.25d |  | resources none → Silvia Cerezo (T) [20%] |
| 19 | Contratación de instaladores eléctricos |  | 2015-02-18 → 2015-02-19 (+1d) | 1d? → 1d | none → 38.25d |  | resources none → Silvia Cerezo (T) [20%] |
| 20 | Contratación de instaladores de AC |  | 2015-02-18 → 2015-02-19 (+1d) |  | none → 38.25d |  | resources none → Silvia Cerezo (T) [20%] |
| 21 | Contratación de instaladores moqueda/sillones |  | 2015-02-18 → 2015-02-19 (+1d) |  | none → 38.25d |  | resources none → Ana Sebastián (A) [20%] |
| 22 | Matriculación en cursos |  | 2015-02-18 → 2015-02-19 (+1d) |  | none → 38.25d |  | resources none → Ana Sebastián (A) [20%] |
| 23 | Cursos de .NET | 2015-02-18 → 2015-02-19 (+1d) | 2015-02-18 → 2015-03-03 (+13d) | 1d → 8.5d |  |  | resources none → Cursos .NET; Encarna Marín; Enrique Moreno; Sebastián Del Rio; Vicente Pérez |
| 25 | Planificación instalación de máquinas |  | 2015-02-18 → 2015-02-19 (+1d) | 1d? → 1d | none → -0.25d |  | resources none → Jose Luis Fernández [20%] |
| 26 | Planificación instalación de salas |  | 2015-02-18 → 2015-02-19 (+1d) | 1d? → 1d | none → -0.25d |  | resources none → Jose Luis Fernández [20%] |
| 27 | Planificación portal web |  | 2015-02-18 → 2015-02-19 (+1d) | 1d? → 1d | none → -0.25d |  | resources none → Jose Luis Fernández [20%] |
| 28 | Compra de las máquinas |  | 2015-02-18 → 2015-02-19 (+1d) | 1d? → 1d | none → -0.25d |  | resources none → Jose Luis Fernández [10%]; Maquinas expendedoras [2000%] |
| 29 | Compra de ordenadores |  | 2015-02-18 → 2015-02-19 (+1d) | 1d? → 1d | none → -0.25d |  | resources none → Jose Luis Fernández [10%]; Ordenadores (taquilla) [2000%]; Ordenadores (web) [300%] |
| 31 | Compra de muebles |  | 2015-02-18 → 2015-02-19 (+1d) |  | none → -0.25d |  | resources none → Jose Luis Fernández [10%]; Muebles |
| 56 | **Portal web** | 2015-02-18 → 2015-02-19 (+1d) | 2015-02-18 → 2015-04-15 (+56d) | 1d? → 39.25d? | 0d → none |  |  |
| 57 | Diseño web (cliente) | 2015-02-18 → 2015-02-19 (+1d) | 2015-02-18 → 2015-02-27 (+9d) | 1d → 6.12d | none → 27.12d |  | resources none → Alba Martínez; Ana Sebastián (A) |
| 58 | Diseño web (gráfico) | 2015-02-18 → 2015-02-19 (+1d) | 2015-02-18 → 2015-02-27 (+9d) | 1d → 6.12d | none → 29.12d |  | resources none → Jose Luis Fernández; María Peris |
| 59 | Diseño web (servidor) | 2015-02-18 → 2015-03-03 (+13d) | 2015-02-18 → 2015-03-11 (+21d) | 1d → 6.75d | none → 0d | none → 23 | resources none → Encarna Marín; Enrique Moreno; Sebastián Del Rio |
| 60 | Edición de videos | 2015-02-18 → 2015-02-27 (+9d) | 2015-02-18 → 2015-03-04 (+14d) | 1d → 3d | none → 29.12d | none → 58 | resources none → Jose Luis Fernández |
| 61 | Publicación de videos | 2015-02-18 → 2015-03-04 (+14d) | 2015-02-18 → 2015-03-05 (+15d) |  | none → 29.12d | none → 60 | resources none → Jose Luis Fernández |
| 62 | Adquisición de recursos multimedia | 2015-02-18 → 2015-02-27 (+9d) | 2015-02-18 → 2015-03-02 (+12d) | 1d → 1.12d | none → 32d | none → 58 | resources none → María Peris |
| 63 | Programación web (cliente) | 2015-02-18 → 2015-02-27 (+9d) | 2015-02-18 → 2015-03-09 (+19d) | 1d? → 6d | none → 27.12d | none → 57 | resources none → Alba Martínez; Ana Sebastián (A) |
| 64 | Entrega de web (1) | 2015-02-18 → 2015-03-09 (+19d) | 2015-02-18 → 2015-03-09 (+19d) | 1d → 0d |  | none → 63 | resources none → Alba Martínez; Ana Sebastián (A) |
| 65 | Programación compra de entradas | 2015-02-18 → 2015-03-11 (+21d) | 2015-02-18 → 2015-03-18 (+28d) | 1d → 5d | none → 19.75d | none → 59 | resources none → Sebastián Del Rio |
| 66 | Programación de opiniones | 2015-02-18 → 2015-03-12 (+22d) | 2015-02-18 → 2015-03-19 (+29d) | 1d → 4.5d | none → 0d | none → 3 | constraint none → start no earlier than 2015-03-12; resources none → Enrique Moreno |
| 67 | Programación de avisos | 2015-02-18 → 2015-03-11 (+21d) | 2015-02-18 → 2015-03-18 (+28d) | 1d → 5d | none → 19.75d | none → 59 | resources none → Encarna Marín |
| 68 | Programación control de actualizaciones (peliculas y sesiones) | 2015-02-18 → 2015-03-03 (+13d) | 2015-02-18 → 2015-03-10 (+20d) | 1d → 5d |  | none → 23 | resources none → Vicente Pérez |
| 69 | Programación de estadísticas | 2015-02-18 → 2015-03-03 (+13d) | 2015-02-18 → 2015-03-10 (+20d) | 1d → 5d |  | none → 23 | resources none → Silvia Cerezo (P) |
| 70 | Programación web (servidor) | 2015-02-18 → 2015-03-19 (+29d) | 2015-02-18 → 2015-03-26 (+36d) | 1d → 5.62d | none → 0d | none → 66 | resources none → Sebastián Del Rio; Silvia Cerezo (P); Encarna Marín; Enrique Moreno |
| 71 | Terminar programación cliente | 2015-02-18 → 2015-03-10 (+20d) | 2015-02-18 → 2015-03-18 (+28d) | 1d → 6d |  | none → 68 | resources none → Ana Sebastián (PW); María Peris; Vicente Pérez |
| 72 | Terminar programación servidor | 2015-02-18 → 2015-03-26 (+36d) | 2015-02-18 → 2015-04-03 (+44d) | 1d → 7d | none → 0d | none → 70 | resources none → Encarna Marín; Enrique Moreno; Sebastián Del Rio; Silvia Cerezo (P) |
| 73 | Entrega de web (2) | 2015-02-18 → 2015-04-03 (+44d) | 2015-02-18 → 2015-04-03 (+44d) | 1d → 0d |  | none → 72 |  |
| 74 | Pruebas de web (1) | 2015-02-18 → 2015-04-03 (+44d) | 2015-02-18 → 2015-04-14 (+55d) | 1d → 7d |  | none → 72 | resources none → Enrique Moreno; Rafael Benito |
| 75 | Instalar SO en servidor | 2015-02-18 → 2015-02-20 (+2d) | 2015-02-18 → 2015-02-23 (+5d) |  |  | none → 30 | resources none → Rafael Benito |
| 76 | Configurar servidor | 2015-02-18 → 2015-02-23 (+5d) | 2015-02-18 → 2015-02-24 (+6d) |  |  | none → 75 | resources none → Rafael Benito |
| 77 | Configurar router | 2015-02-18 → 2015-02-24 (+6d) | 2015-02-18 → 2015-02-25 (+7d) |  |  | none → 76 | resources none → Rafael Benito |
| 78 | Prueba de la instalación de servidor | 2015-02-18 → 2015-02-25 (+7d) | 2015-02-18 → 2015-03-02 (+12d) | 1d → 3d |  | none → 77 | resources none → Rafael Benito |
| 79 | Instalación de web en servidor | 2015-02-18 → 2015-04-03 (+44d) | 2015-02-18 → 2015-04-06 (+47d) |  |  | none → 72 | resources none → Rafael Benito |
| 80 | Entrega web (3) | 2015-02-18 → 2015-04-06 (+47d) | 2015-02-18 → 2015-04-06 (+47d) | 1d → 0d |  | none → 79 |  |
| 81 | Pruebas de web (2) | 2015-02-18 → 2015-04-06 (+47d) | 2015-02-18 → 2015-04-15 (+56d) | 1d → 7d |  | none → 79 |  |

## Version 3 (saved 2015-02-23)

Note of the change: clase23022015

Last finish 2015-04-15 → 2015-09-18 (+156d).

Added:

| ID | Task | Duration | Start | Finish | Predecessors |
| --- | --- | --- | --- | --- | --- |
| 9 | Finalización web | 0d | 2015-04-15 | 2015-04-15 | 82 |

Changed:

| ID | Task | Start | Finish | Duration | Total float | Predecessors | Other |
| --- | --- | --- | --- | --- | --- | --- | --- |
| 1 | **Responsabilidad de la dirección** |  | 2015-03-12 → 2015-09-18 (+190d) | 16.5d? → 152.38d? |  |  |  |
| 4 | Gastos indirectos |  | 2015-02-18 → 2015-04-15 (+56d) | 1d? → 41d |  |  | resources none → Agua potable; Dietas; Luz electrica; Oficinas; Seguro |
| 5 | Taquillas y equipos instalados | 2015-02-18 → 2015-02-23 (+5d) | 2015-02-18 → 2015-02-23 (+5d) | 1d? → 0d |  | none → 35 |  |
| 6 | Finalización de sala 3D | 2015-02-18 → 2015-09-18 (+212d) | 2015-02-18 → 2015-09-18 (+212d) | 1d? → 0d |  | none → 42 |  |
| 7 | Finalización de sala digital | 2015-02-18 → 2015-04-24 (+65d) | 2015-02-18 → 2015-04-24 (+65d) | 1d? → 0d |  | none → 49 |  |
| 8 | Finalización de sala VO | 2015-02-18 → 2015-08-28 (+191d) | 2015-02-18 → 2015-08-31 (+194d) |  |  | none → 56 |  |
| 10 | Entrega final | 2015-02-18 → 2015-09-18 (+212d) | 2015-02-18 → 2015-09-18 (+212d) | 1d? → 0d |  | none → 42 |  |
| 33 | Instalación de máquinas |  | 2015-02-18 → 2015-02-20 (+2d) | 1d → 3d | 0d → -2d |  |  |
| 34 | Instalación de ordenadores |  | 2015-02-18 → 2015-02-20 (+2d) | 1d → 3d | 0d → -2d |  |  |
| 35 | Instalación de mobiliario |  | 2015-02-18 → 2015-02-20 (+2d) | 1d → 3d | 0d → -2d |  |  |
| 36 | **Sala 3d** |  | 2015-02-18 → 2015-09-18 (+212d) | 1d? → 152.38d | 0d → -44.5d |  |  |
| 37 | Comprar proyector y gafas |  |  | 1d? → 1d |  |  | resources none → Vicente Pérez [10%] |
| 38 | Poner butacas | 2015-02-18 → 2015-03-04 (+14d) | 2015-02-18 → 2015-03-25 (+35d) | 1d? → 15d |  | none → 40 | resources none → Butacas; Instaladores butacas/moqueta |
| 39 | Instalar aire acondicionado | 2015-02-18 → 2015-08-19 (+182d) | 2015-02-18 → 2015-09-16 (+210d) | 1d? → 20d |  | none → 46 | resources none → Aire acondicionado; Instalador AC experimentado; Instalador AC Nobel |
| 40 | Moqueta |  | 2015-02-18 → 2015-03-04 (+14d) | 1d → 10.12d | none → -9.25d |  | resources none → Moqueta; Instaladores butacas/moqueta |
| 41 | Iluminado | 2015-02-18 → 2015-04-22 (+63d) | 2015-02-18 → 2015-06-24 (+126d) | 1d → 45.12d | none → -89.62d | none → 48 | resources none → Aprendices electricos; Iluminado; Oficiales electricos |
| 42 | Limpieza | 2015-02-18 → 2015-09-16 (+210d) | 2015-02-18 → 2015-09-18 (+212d) | 1d → 2d |  | none → 39 | resources none → Material de limpieza; Operarios de limpieza |
| 43 | **Sala digital** |  | 2015-02-18 → 2015-08-19 (+182d) | 1d? → 130.38d | 0d → -89.5d |  |  |
| 44 | Compra de proyector |  |  | 1d? → 0.75d |  |  | resources none → Vicente Pérez [10%] |
| 45 | Poner butacas | 2015-02-18 → 2015-05-13 (+84d) | 2015-02-18 → 2015-06-03 (+105d) | 1d → 15d |  | none → 47 | resources none → Butacas; Instaladores butacas/moqueta |
| 46 | Instalar aire acondicionado | 2015-02-18 → 2015-07-22 (+154d) | 2015-02-18 → 2015-08-19 (+182d) | 1d → 20d |  | none → 53 | resources none → Aire acondicionado; Instalador AC experimentado; Instalador AC Nobel |
| 47 | Moqueta | 2015-02-18 → 2015-04-29 (+70d) | 2015-02-18 → 2015-05-13 (+84d) | 1d → 10d |  | none → 52 | resources none → Instaladores butacas/moqueta; Moqueta |
| 48 | Iluminado |  | 2015-02-18 → 2015-04-22 (+63d) | 1d → 45d | none → -89.5d |  | resources none → Aprendices electricos; Iluminado; Oficiales electricos |
| 49 | Limpieza | 2015-02-18 → 2015-04-22 (+63d) | 2015-02-18 → 2015-04-24 (+65d) | 1d → 2.62d | none → -46.38d | none → 48 | resources none → Material de limpieza; Operarios de limpieza |
| 50 | **Sala VO** | 2015-02-18 → 2015-03-25 (+35d) | 2015-02-18 → 2015-08-28 (+191d) | 1d? → 112.25d |  |  |  |
| 51 | Compra de proyector | 2015-02-18 → 2015-03-25 (+35d) | 2015-02-18 → 2015-03-25 (+35d) | 1d? → 0.75d |  |  | resources none → Vicente Pérez [10%] |
| 52 | Poner butacas | 2015-02-18 → 2015-04-08 (+49d) | 2015-02-18 → 2015-04-29 (+70d) | 1d → 15d |  | none → 54 | resources none → Butacas; Instaladores butacas/moqueta |
| 53 | Instalar aire acondicionado | 2015-02-18 → 2015-06-24 (+126d) | 2015-02-18 → 2015-07-22 (+154d) | 1d → 20d |  | none → 41 | resources none → Aire acondicionado; Instalador AC experimentado; Instalador AC Nobel |
| 54 | Moqueta | 2015-02-18 → 2015-03-25 (+35d) | 2015-02-18 → 2015-04-08 (+49d) | 1d → 10d |  | none → 38 | resources none → Instaladores butacas/moqueta; Moqueta |
| 55 | Iluminado | 2015-02-18 → 2015-06-24 (+126d) | 2015-02-18 → 2015-08-26 (+189d) | 1d → 45d |  | none → 41 | resources none → Aprendices electricos; Iluminado; Oficiales electricos |
| 56 | Limpieza | 2015-02-18 → 2015-08-26 (+189d) | 2015-02-18 → 2015-08-28 (+191d) | 1d → 2d |  | none → 55 | resources none → Material de limpieza; Operarios de limpieza |

## Version 4 (saved 2015-02-24)

Note of the change: casa19042015

Last finish stays 2015-09-18.

Added:

| ID | Task | Duration | Start | Finish |
| --- | --- | --- | --- | --- |
| 80 | **Medición análisis y mejora** | 35d | 2015-02-25 | 2015-04-15 |
