# Proyecto3_2

How a schedule from MS Project changed from version to version. A marks actual dates.

## Version 1 (saved 2015-02-28)

Note of the change: 09032015clase01

| ID | WBS | Task | Duration | Start | Finish | Predecessors | Total float | Constraint |
| --- | --- | --- | --- | --- | --- | --- | --- | --- |
| 1 | 1 | **Responsabilidad de la dirección** | 152.38d | 2015-02-18 | 2015-09-18 |  | 0d |  |
| 2 |  | 1 reunión con cliente | 1d | 2015-02-18 | 2015-02-19 |  | 151.38d |  |
| 3 |  | Presentación de proyecto al cliente | 1d | 2015-03-11 | 2015-03-12 | 60 |  |  |
| 4 |  | Gastos indirectos | 41d | 2015-02-18 | 2015-04-15 |  |  |  |
| 5 |  | Taquillas y equipos instalados | 0d | 2015-02-23 | 2015-02-23 | 35 |  |  |
| 6 |  | Finalización de sala 3D | 0d | 2015-09-18 | 2015-09-18 | 42 |  |  |
| 7 |  | Finalización de sala digital | 0d | 2015-04-24 | 2015-04-24 | 49 |  |  |
| 8 |  | Finalización de sala VO | 0d | 2015-08-28 | 2015-08-28 | 56 |  |  |
| 9 |  | Finalización web | 0d | 2015-04-15 | 2015-04-15 | 83 |  |  |
| 10 |  | Entrega final | 0d | 2015-09-18 | 2015-09-18 | 42 |  |  |
| 11 | 2 | **Gestión de recursos** | 13.25d | 2015-02-12 | 2015-03-03 |  | 2.25d |  |
| 12 |  | Busqueda de proveedores de máquinas expendedoras | 5.62d | 2015-02-12 | 2015-02-19 |  | 150.38d | finish no earlier than 2015-02-19 |
| 13 |  | Busqueda de proveedores de ordenadores | 1d | 2015-02-18 | 2015-02-19 |  | 151.38d |  |
| 14 |  | Busqueda de proveedores de muebles | 1.12d | 2015-02-18 | 2015-02-19 |  | 151.25d |  |
| 15 |  | Busqueda de proveedores de proyectores | 1.12d | 2015-02-18 | 2015-02-19 |  | 151.25d |  |
| 16 |  | Busqueda de empresas de electricidad | 1.12d | 2015-02-18 | 2015-02-19 |  | 151.25d |  |
| 17 |  | Busqueda de instaladores de aire acondicionado | 1.12d | 2015-02-18 | 2015-02-19 |  | -1.5d |  |
| 18 |  | Busqueda de instaladores de moqueta/sillones | 1d | 2015-02-18 | 2015-02-19 |  | 151.38d |  |
| 19 |  | Busqueda de cursos .NET | 1d | 2015-02-18 | 2015-02-18 |  | 151.38d |  |
| 20 |  | Contratación de instaladores eléctricos | 1d | 2015-02-18 | 2015-02-19 |  | 151.38d |  |
| 21 |  | Contratación de instaladores de AC | 1d | 2015-02-18 | 2015-02-19 |  | 151.38d |  |
| 22 |  | Contratación de instaladores moqueda/sillones | 1d | 2015-02-18 | 2015-02-19 |  | 151.38d |  |
| 23 |  | Matriculación en cursos | 1d | 2015-02-18 | 2015-02-19 |  | 151.38d |  |
| 24 |  | Cursos de .NET | 8.5d | 2015-02-19 | 2015-03-03 |  |  |  |
| 25 | 3 | **Realización del producto** | 1d? | 2015-02-18 | 2015-02-18 |  |  |  |
| 26 |  | Planificación instalación de máquinas | 1d | 2015-02-18 | 2015-02-19 |  | -0.25d |  |
| 27 |  | Planificación instalación de salas | 1d | 2015-02-18 | 2015-02-19 |  | -0.25d |  |
| 28 |  | Planificación portal web | 1d | 2015-02-18 | 2015-02-19 |  | -0.25d |  |
| 29 |  | Compra de las máquinas | 1d | 2015-02-18 | 2015-02-19 |  | -0.25d |  |
| 30 |  | Compra de ordenadores | 1d | 2015-02-18 | 2015-02-19 |  | -0.25d |  |
| 31 |  | Comprar servidor | 1.12d | 2015-02-19 | 2015-02-20 | 17 | -1.5d |  |
| 32 |  | Compra de muebles | 1d | 2015-02-18 | 2015-02-19 |  | -0.25d |  |
| 33 |  | Instalación de máquinas | 3d | 2015-02-18 | 2015-02-20 |  | -2d |  |
| 34 |  | Instalación de ordenadores | 3d | 2015-02-18 | 2015-02-20 |  | -2d |  |
| 35 |  | Instalación de mobiliario | 3d | 2015-02-18 | 2015-02-20 |  | -2d |  |
| 36 | 3.11 | **Sala 3d** | 152.38d | 2015-02-18 | 2015-09-18 |  | -44.5d |  |
| 37 |  | Comprar proyector y gafas | 1d | 2015-02-18 | 2015-02-18 |  |  |  |
| 38 |  | Poner butacas | 15d | 2015-03-04 | 2015-03-25 | 40 |  |  |
| 39 |  | Instalar aire acondicionado | 20d | 2015-08-19 | 2015-09-16 | 46 |  |  |
| 40 |  | Moqueta | 10.12d | 2015-02-18 | 2015-03-04 |  | -9.25d |  |
| 41 |  | Iluminado | 45.12d | 2015-04-22 | 2015-06-24 | 48 | -89.62d |  |
| 42 |  | Limpieza | 2d | 2015-09-16 | 2015-09-18 | 39 |  |  |
| 43 | 3.12 | **Sala digital** | 130.38d | 2015-02-18 | 2015-08-19 |  | -89.5d |  |
| 44 |  | Compra de proyector | 0.75d | 2015-02-18 | 2015-02-18 |  |  |  |
| 45 |  | Poner butacas | 15d | 2015-05-13 | 2015-06-03 | 47 |  |  |
| 46 |  | Instalar aire acondicionado | 20d | 2015-07-22 | 2015-08-19 | 53 |  |  |
| 47 |  | Moqueta | 10d | 2015-04-29 | 2015-05-13 | 52 |  |  |
| 48 |  | Iluminado | 45d | 2015-02-18 | 2015-04-22 |  | -89.5d |  |
| 49 |  | Limpieza | 2.62d | 2015-04-22 | 2015-04-24 | 48 | -46.38d |  |
| 50 | 3.13 | **Sala VO** | 112.25d | 2015-03-25 | 2015-08-28 |  | 0d |  |
| 51 |  | Compra de proyector | 0.75d | 2015-03-25 | 2015-03-25 |  |  |  |
| 52 |  | Poner butacas | 15d | 2015-04-08 | 2015-04-29 | 54 |  |  |
| 53 |  | Instalar aire acondicionado | 20d | 2015-06-24 | 2015-07-22 | 41 |  |  |
| 54 |  | Moqueta | 10d | 2015-03-25 | 2015-04-08 | 38 |  |  |
| 55 |  | Iluminado | 45d | 2015-06-24 | 2015-08-26 | 41 |  |  |
| 56 |  | Limpieza | 2d | 2015-08-26 | 2015-08-28 | 55 |  |  |
| 57 | 3.14 | **Portal web** | 39.25d? | 2015-02-19 | 2015-04-15 |  |  |  |
| 58 |  | Diseño web (cliente) | 6.12d | 2015-02-19 | 2015-02-27 |  | 27.12d |  |
| 59 |  | Diseño web (gráfico) | 6.12d | 2015-02-19 | 2015-02-27 |  | 29.12d |  |
| 60 |  | Diseño web (servidor) | 6.75d | 2015-03-03 | 2015-03-11 | 24 | 1d |  |
| 61 |  | Edición de videos | 3d | 2015-02-27 | 2015-03-04 | 59 | 29.12d |  |
| 62 |  | Publicación de videos | 1d | 2015-03-04 | 2015-03-05 | 61 | 29.12d |  |
| 63 |  | Adquisición de recursos multimedia | 1.12d | 2015-02-27 | 2015-03-02 | 59 | 32d |  |
| 64 |  | Programación web (cliente) | 6d | 2015-02-27 | 2015-03-09 | 58 | 27.12d |  |
| 65 |  | Entrega de web (1) | 0d | 2015-03-09 | 2015-03-09 | 64 |  |  |
| 66 |  | Programación compra de entradas | 5d | 2015-03-11 | 2015-03-18 | 60 | 19.75d |  |
| 67 |  | Programación de opiniones | 4.5d | 2015-03-12 | 2015-03-19 | 3 | 1d | start no earlier than 2015-03-12 |
| 68 |  | Programación de avisos | 5d | 2015-03-11 | 2015-03-18 | 60 | 19.75d |  |
| 69 |  | Programación control de actualizaciones (peliculas y sesiones) | 5d | 2015-03-03 | 2015-03-10 | 24 |  |  |
| 70 |  | Programación de estadísticas | 5d | 2015-03-03 | 2015-03-10 | 24 |  |  |

| ID | WBS | Task | Duration | Start | Finish | Predecessors | Total float |
| --- | --- | --- | --- | --- | --- | --- | --- |
| 71 |  | Programación web (servidor) | 5.62d | 2015-03-19 | 2015-03-26 | 67 | 1d |
| 72 |  | Terminar programación cliente | 6d | 2015-03-10 | 2015-03-18 | 69 |  |
| 73 |  | Terminar programación servidor | 7d | 2015-03-26 | 2015-04-03 | 71 | 1d |
| 74 |  | Entrega de web (2) | 0d | 2015-04-03 | 2015-04-03 | 73 |  |
| 75 |  | Pruebas de web (1) | 7d | 2015-04-03 | 2015-04-14 | 73 |  |
| 76 |  | Instalar SO en servidor | 1d | 2015-02-20 | 2015-02-23 | 31 |  |
| 77 |  | Configurar servidor | 1d | 2015-02-23 | 2015-02-24 | 76 |  |
| 78 |  | Configurar router | 1d | 2015-02-24 | 2015-02-25 | 77 |  |
| 79 |  | Instalación de web en servidor | 1d | 2015-04-03 | 2015-04-06 | 73 |  |
| 80 | 4 | **Medición análisis y mejora** | 35d | 2015-02-25 | 2015-04-15 |  | 0d |
| 81 |  | Prueba de la instalación de servidor | 3d | 2015-02-25 | 2015-03-02 | 78 |  |
| 82 |  | Entrega web (3) | 0d | 2015-04-06 | 2015-04-06 | 79 |  |
| 83 |  | Pruebas de web (2) | 7d | 2015-04-06 | 2015-04-15 | 79 |  |

## Version 2 (saved 2015-03-10)

Note of the change: casa10032015

Last finish 2015-09-18 → 2015-11-23 (+66d).

Changed:

| ID | Task | Start | Finish | Duration | Total float | Predecessors |
| --- | --- | --- | --- | --- | --- | --- |
| 36 | **Sala 3d** |  | 2015-09-18 → 2015-11-23 (+66d) | 152.38d → 199d |  |  |
| 39 | Instalar aire acondicionado | 2015-08-19 → 2015-10-22 (+64d) | 2015-09-16 → 2015-11-18 (+63d) |  |  |  |
| 42 | Limpieza | 2015-09-16 → 2015-11-19 (+64d) | 2015-09-18 → 2015-11-23 (+66d) | 2d → 3d |  |  |
| 43 | **Sala digital** |  | 2015-08-19 → 2015-10-23 (+65d) | 130.38d → 177.5d | -89.5d → -102.38d |  |
| 46 | Instalar aire acondicionado | 2015-07-22 → 2015-09-23 (+63d) | 2015-08-19 → 2015-10-21 (+63d) |  | none → -176.75d | 53 → 53, 48 |
| 49 | Limpieza | 2015-04-22 → 2015-10-21 (+182d) | 2015-04-24 → 2015-10-23 (+182d) |  | -46.38d → -176.75d | 48 → 46 |
| 50 | **Sala VO** |  | 2015-08-28 → 2015-09-25 (+28d) | 112.25d → 132.25d |  |  |
| 53 | Instalar aire acondicionado | 2015-06-24 → 2015-08-26 (+63d) | 2015-07-22 → 2015-09-23 (+63d) |  |  | 41 → 41, 55 |
| 56 | Limpieza | 2015-08-26 → 2015-09-23 (+28d) | 2015-08-28 → 2015-09-25 (+28d) |  |  | 55 → 53 |
