How a schedule from MS Project changed from version to version. A marks actual dates.

## Version 1 (saved 2015-03-25)

Note of the change: Merge branch 'master' of https://github.com/dagrlo/master2

| ID | WBS | Task | Duration | Start | Finish | Predecessors | Complete | Total float | Constraint |
| --- | --- | --- | --- | --- | --- | --- | --- | --- | --- |
| 1 | 1 | **Responsabilidad de la dirección** | 160.5d | 2015-02-18 | 2015-09-30 |  |  | 0d |  |
| 2 |  | 1 reunión con cliente | 1d | 2015-02-18 | 2015-02-19 |  |  | 159.5d |  |
| 3 |  | Presentación de proyecto al cliente | 1d | 2015-03-11 | 2015-03-12 | 62 |  |  |  |
| 4 |  | Compra de ordenadores (SEINGESA) | 159.5d | 2015-02-18 | 2015-09-29 |  |  |  |  |
| 5 |  | Gastos indirectos | 41d | 2015-02-18 | 2015-04-15 |  |  |  |  |
| 6 |  | Taquillas y equipos instalados | 0d | 2015-02-23 | 2015-02-23 | 37 |  |  |  |
| 7 |  | Finalización de sala 3D | 0d | 2015-09-18 | 2015-09-18 | 44 |  |  |  |
| 8 |  | Finalización de sala digital | 0d | 2015-04-24 | 2015-04-24 | 51 |  |  |  |
| 9 |  | Finalización de sala VO | 0d | 2015-08-28 | 2015-08-28 | 58 |  |  |  |
| 10 |  | Finalización web | 0d | 2015-04-15 | 2015-04-15 | 85 |  |  |  |
| 11 |  | Entrega final | 0d | 2015-09-18 | 2015-09-18 | 44 |  |  |  |
| 12 |  | Amoritiguador del proyecto | 8.5d | 2015-09-18 | 2015-09-30 |  |  |  |  |
| 13 | 2 | **Gestión de recursos** | 13.25d | 2015-02-12 A | 2015-03-03 |  | 48% | 151d |  |
| 14 |  | Busqueda de proveedores de máquinas expendedoras | 5.62d | 2015-02-12 A | 2015-02-19 |  | 75% | 158.5d | finish no earlier than 2015-02-19 |
| 15 |  | Busqueda de proveedores de ordenadores | 1d | 2015-02-18 A | 2015-02-19 |  | 75% | 159.5d |  |
| 16 |  | Busqueda de proveedores de muebles | 1.12d | 2015-02-18 A | 2015-02-19 |  | 75% | 159.38d |  |
| 17 |  | Busqueda de proveedores de proyectores | 1.12d | 2015-02-18 A | 2015-02-19 |  | 75% | 159.38d |  |
| 18 |  | Busqueda de empresas de electricidad | 1.12d | 2015-02-18 A | 2015-02-19 |  | 75% | 159.38d |  |
| 19 |  | Busqueda de instaladores de aire acondicionado | 1.12d | 2015-02-18 | 2015-02-19 |  |  | -1.5d |  |
| 20 |  | Busqueda de instaladores de moqueta/sillones | 1d | 2015-02-18 A | 2015-02-19 |  | 75% | 159.5d |  |
| 21 |  | Busqueda de cursos .NET | 1d | 2015-02-18 A | 2015-02-18 A |  | 100% |  |  |
| 22 |  | Contratación de instaladores eléctricos | 1d | 2015-02-18 A | 2015-02-19 |  | 75% | 159.5d |  |
| 23 |  | Contratación de instaladores de AC | 1d | 2015-02-18 A | 2015-02-19 |  | 75% | 159.5d |  |
| 24 |  | Contratación de instaladores moqueda/sillones | 1d | 2015-02-18 A | 2015-02-19 |  | 75% | 159.5d |  |
| 25 |  | Matriculación en cursos | 1d | 2015-02-18 A | 2015-02-19 |  | 75% | 159.5d |  |
| 26 |  | Cursos de .NET | 8.5d | 2015-02-19 | 2015-03-03 |  |  |  |  |
| 27 | 3 | **Realización del producto** | 1d? | 2015-02-18 A | 2015-02-18 |  | 4% |  |  |
| 28 |  | Planificación instalación de máquinas | 1d | 2015-02-18 A | 2015-02-19 |  | 50% | -0.25d |  |
| 29 |  | Planificación instalación de salas | 1d | 2015-02-18 A | 2015-02-19 |  | 50% | -0.25d |  |
| 30 |  | Planificación portal web | 1d | 2015-02-18 A | 2015-02-19 |  | 50% | -0.25d |  |
| 31 |  | Compra de las máquinas | 1d | 2015-02-18 | 2015-02-19 |  |  | -0.25d |  |
| 32 |  | Compra de ordenadores | 1d | 2015-02-18 | 2015-02-19 |  |  | -0.25d |  |
| 33 |  | Comprar servidor | 1.12d | 2015-02-19 | 2015-02-20 | 19 |  | -1.5d |  |
| 34 |  | Compra de muebles | 1d | 2015-02-18 | 2015-02-19 |  |  | -0.25d |  |
| 35 |  | Instalación de máquinas | 3d | 2015-02-18 | 2015-02-20 |  |  | -2d |  |
| 36 |  | Instalación de ordenadores | 3d | 2015-02-18 | 2015-02-20 |  |  | -2d |  |
| 37 |  | Instalación de mobiliario | 3d | 2015-02-18 | 2015-02-20 |  |  | -2d |  |
| 38 | 3.11 | **Sala 3d** | 152.38d | 2015-02-18 | 2015-09-18 |  |  | -44.5d |  |
| 39 |  | Comprar proyector y gafas | 1d | 2015-02-18 | 2015-02-18 |  |  |  |  |
| 40 |  | Poner butacas | 15d | 2015-03-04 | 2015-03-25 | 42 |  |  |  |
| 41 |  | Instalar aire acondicionado | 20d | 2015-08-19 | 2015-09-16 | 48 |  |  |  |
| 42 |  | Moqueta | 10.12d | 2015-02-18 | 2015-03-04 |  |  | -9.25d |  |
| 43 |  | Iluminado | 45.12d | 2015-04-22 | 2015-06-24 | 50 |  | -89.62d |  |
| 44 |  | Limpieza | 2d | 2015-09-16 | 2015-09-18 | 41 |  |  |  |
| 45 | 3.12 | **Sala digital** | 130.38d | 2015-02-18 A | 2015-08-19 |  | 8% | 0d |  |
| 46 |  | Compra de proyector | 0.75d | 2015-02-18 | 2015-02-18 |  |  |  |  |
| 47 |  | Poner butacas | 15d | 2015-05-13 A | 2015-06-03 | 49 | 50% |  |  |
| 48 |  | Instalar aire acondicionado | 20d | 2015-07-22 | 2015-08-19 | 55 |  |  |  |
| 49 |  | Moqueta | 10d | 2015-04-29 | 2015-05-13 | 54 |  |  |  |
| 50 |  | Iluminado | 45d | 2015-02-18 | 2015-04-22 |  |  | -89.5d |  |
| 51 |  | Limpieza | 2.62d | 2015-04-22 | 2015-04-24 | 50 |  | -46.38d |  |
| 52 | 3.13 | **Sala VO** | 112.25d | 2015-03-25 | 2015-08-28 |  |  | 0d |  |
| 53 |  | Compra de proyector | 0.75d | 2015-03-25 | 2015-03-25 |  |  |  |  |
| 54 |  | Poner butacas | 15d | 2015-04-08 | 2015-04-29 | 56 |  |  |  |
| 55 |  | Instalar aire acondicionado | 20d | 2015-06-24 | 2015-07-22 | 43 |  |  |  |
| 56 |  | Moqueta | 10d | 2015-03-25 | 2015-04-08 | 40 |  |  |  |
| 57 |  | Iluminado | 45d | 2015-06-24 | 2015-08-26 | 43 |  |  |  |
| 58 |  | Limpieza | 2d | 2015-08-26 | 2015-08-28 | 57 |  |  |  |
| 59 | 3.14 | **Portal web** | 39.25d? | 2015-02-19 A | 2015-04-15 |  | 6% |  |  |
| 60 |  | Diseño web (cliente) | 6.12d | 2015-02-19 A | 2015-02-27 |  | 25% | 27.12d |  |
| 61 |  | Diseño web (gráfico) | 6.12d | 2015-02-19 A | 2015-02-27 |  | 25% | 29.12d |  |
| 62 |  | Diseño web (servidor) | 6.75d | 2015-03-03 A | 2015-03-11 | 26 | 25% | 1d |  |
| 63 |  | Edición de videos | 3d | 2015-02-27 | 2015-03-04 | 61 |  | 29.12d |  |
| 64 |  | Publicación de videos | 1d | 2015-03-04 | 2015-03-05 | 63 |  | 29.12d |  |
| 65 |  | Adquisición de recursos multimedia | 1.12d | 2015-02-27 | 2015-03-02 | 61 |  | 32d |  |
| 66 |  | Programación web (cliente) | 6d | 2015-02-27 | 2015-03-09 | 60 |  | 27.12d |  |
| 67 |  | Entrega de web (1) | 0d | 2015-03-09 | 2015-03-09 | 66 |  |  |  |
| 68 |  | Programación compra de entradas | 5d | 2015-03-11 | 2015-03-18 | 62 |  | 19.75d |  |
| 69 |  | Programación de opiniones | 4.5d | 2015-03-12 | 2015-03-19 | 3 |  | 1d | start no earlier than 2015-03-12 |
| 70 |  | Programación de avisos | 5d | 2015-03-11 | 2015-03-18 | 62 |  | 19.75d |  |

| ID | WBS | Task | Duration | Start | Finish | Predecessors | Total float |
| --- | --- | --- | --- | --- | --- | --- | --- |
| 71 |  | Programación control de actualizaciones (peliculas y sesiones) | 5d | 2015-03-03 | 2015-03-10 | 26 |  |
| 72 |  | Programación de estadísticas | 5d | 2015-03-03 | 2015-03-10 | 26 |  |
| 73 |  | Programación web (servidor) | 5.62d | 2015-03-19 | 2015-03-26 | 69 | 1d |
| 74 |  | Terminar programación cliente | 6d | 2015-03-10 | 2015-03-18 | 71 |  |
| 75 |  | Terminar programación servidor | 7d | 2015-03-26 | 2015-04-03 | 73 | 1d |
| 76 |  | Entrega de web (2) | 0d | 2015-04-03 | 2015-04-03 | 75 |  |
| 77 |  | Pruebas de web (1) | 7d | 2015-04-03 | 2015-04-14 | 75 |  |
| 78 |  | Instalar SO en servidor | 1d | 2015-02-20 | 2015-02-23 | 33 |  |
| 79 |  | Configurar servidor | 1d | 2015-02-23 | 2015-02-24 | 78 |  |
| 80 |  | Configurar router | 1d | 2015-02-24 | 2015-02-25 | 79 |  |
| 81 |  | Instalación de web en servidor | 1d | 2015-04-03 | 2015-04-06 | 75 |  |
| 82 | 4 | **Medición análisis y mejora** | 35d | 2015-02-25 | 2015-04-15 |  | 0d |
| 83 |  | Prueba de la instalación de servidor | 3d | 2015-02-25 | 2015-03-02 | 80 |  |
| 84 |  | Entrega web (3) | 0d | 2015-04-06 | 2015-04-06 | 81 |  |
| 85 |  | Pruebas de web (2) | 7d | 2015-04-06 | 2015-04-15 | 81 |  |

## Version 2 (saved 2015-03-30)

Note of the change: Merge branch 'master' of https://github.com/dagrlo/master2

Last finish stays 2015-09-30.

Changed:

| ID | Task | Finish | Duration |
| --- | --- | --- | --- |
| 5 | Gastos indirectos | 2015-04-15 → 2015-09-29 (+167d) | 41d → 160d |
